# Projekt kryt

Schedule from MS Project, 2019-01-02 to 2020-08-31, costs in zł, A marks actual dates.

## Calendars

- Standardowy: Mon-Fri 09:00-13:00, 14:00-18:00; Sat-Sun off. Exceptions (off unless hours are given): 2019-04-22 (Poniedziałek Wielkanocny), 2019-05-01 (Święto Pracy), 2019-05-02 (Dzień Flagi RP), 2019-05-03 (Święto Konstytucji 3 Maja), 2019-06-20 (Boże Ciało), 2019-08-15 (Święto Wojska Polskiego), 2019-11-01 (Wszystkich Świętych), 2019-11-11 (Święto Niepodległości), 2019-12-24 (Wigilia Bożego Narodzenia), 2019-12-25 to 2019-12-26 (Boże Narodzenie), 2020-01-01 (Nowy Rok), 2020-01-06 (Trzech Króli), 2020-04-13 (Poniedziałek Wielkanocny), 2020-05-01 (Święto Pracy), 2020-06-11 (Boże Ciało).

## Resources

| Resource | Rate |
| --- | --- |
| Kierownik projektu | 125 |
| Senior Backend Developer | 125 |
| Backend Developer 1 | 56 |
| Backend Developer 2 | 56 |
| Junior Backend Developer 2 | 25 |
| Test Developer | 81 |
| Junior Backend Developer 1 | 25 |
| Web Application Security Specialist | 81 |
| Frontend Developer 1 | 63 |
| Frontend Developer 2 | 63 |
| UI Developer | 44 |
| Scrum Master | 56 |

## Schedule

| ID | WBS | Task | Type | Duration | Start | Finish | Predecessors | Complete | Resources | Work | Actual work | Cost | Actual cost |
| --- | --- | --- | --- | --- | --- | --- | --- | --- | --- | --- | --- | --- | --- |
| 1 | 1 | **1. Analiza i specyfikacja wymagań** |  | 113d | 2019-01-02 A | 2019-06-13 A |  | 100% |  | 3768h | 3768h | 291,600 | 291,600 |
| 2 | 1.1 | **1.1. Określenie wymagań** |  | 62d | 2019-01-02 A | 2019-03-28 A |  | 100% |  | 3096h | 3096h | 220,296 | 220,296 |
| 3 | 1.1.1 | **1.1.1. Tworzenie zespołu** |  | 12d | 2019-01-02 A | 2019-01-17 A |  | 100% |  | 1080h | 1080h | 67,800 | 67,800 |
| 4 | 1.1.1.1 | 1.1.1.1. Zdefiniowanie ról w zespole | manual | 4d | 2019-01-02 A | 2019-01-07 A |  | 100% | Backend Developer 1; Frontend Developer 1; Junior Backend Developer 1; Kierownik projektu; Scrum Master; Senior Backend Developer; Test Developer; UI Developer; Web Application Security Specialist; Backend Developer 2; Frontend Developer 2; Junior Backend Developer 2 | 376h | 376h | 24,600 | 24,600 |
| 5 | 1.1.1.2 | 1.1.1.2. Zidentyfikowanie wymaganych umiejętności | manual | 4d | 2019-01-08 A | 2019-01-11 A | 4 | 100% | Backend Developer 1; Backend Developer 2; Frontend Developer 1; Frontend Developer 2; Junior Backend Developer 1; Junior Backend Developer 2; Kierownik projektu [50%]; Scrum Master; Senior Backend Developer [50%]; Test Developer; UI Developer; Web Application Security Specialist | 352h | 352h | 21,600 | 21,600 |
| 6 | 1.1.1.3 | 1.1.1.3. Zidentyfikowanie zasobów | manual | 4d | 2019-01-14 A | 2019-01-17 A | 5 | 100% | Backend Developer 1; Backend Developer 2; Frontend Developer 1; Frontend Developer 2; Junior Backend Developer 1; Junior Backend Developer 2; Kierownik projektu [50%]; Scrum Master; Senior Backend Developer [50%]; Test Developer; UI Developer; Web Application Security Specialist | 352h | 352h | 21,600 | 21,600 |
| 7 | 1.1.2 | **1.1.2. Konsultacje z udziałem pracowników medycznych** |  | 32d | 2019-01-18 A | 2019-03-04 A |  | 100% |  | 1288h | 1288h | 95,096 | 95,096 |
| 8 | 1.1.2.1 | 1.1.2.1. Konsultacje z pracownikami medycznymi odnośnie ich oczekiwań | manual | 6d | 2019-01-18 A | 2019-01-25 A | 6 | 100% | Kierownik projektu; Scrum Master; Senior Backend Developer | 136h | 136h | 13,688 | 13,688 |
| 9 | 1.1.2.2 | 1.1.2.2. Konsultacje w celu poznania różnych możliwości użytkowania aplikacji | manual | 6d | 2019-01-28 A | 2019-02-04 A | 8 | 100% | Kierownik projektu; Scrum Master; Senior Backend Developer | 128h | 128h | 12,688 | 12,688 |
| 10 | 1.1.2.3 | 1.1.2.3. Konsultacje w celu zaprojektowania panelu uzytkownika | manual | 6d | 2019-02-05 A | 2019-02-12 A | 9 | 100% | Frontend Developer 2; Frontend Developer 1; Kierownik projektu; UI Developer; Scrum Master | 232h | 232h | 15,848 | 15,848 |
| 11 | 1.1.2.4 | 1.1.2.4. Konsultacje w celu zdefiniowania różnych profili użytkowników | manual | 6d | 2019-02-13 A | 2019-02-20 A | 10 | 100% | Backend Developer 1; Backend Developer 2; Junior Backend Developer 1; Junior Backend Developer 2; Kierownik projektu; Senior Backend Developer; Test Developer; Web Application Security Specialist | 256h | 256h | 18,920 | 18,920 |
| 12 | 1.1.2.5 | 1.1.2.5. Badanie opinii przyszłych użytkowników | manual | 8d | 2019-02-21 A | 2019-03-04 A | 11 | 100% | Backend Developer 1; Backend Developer 2; Frontend Developer 1; Frontend Developer 2; Junior Backend Developer 1; Junior Backend Developer 2; Kierownik projektu; Scrum Master; Senior Backend Developer; Test Developer; UI Developer; Web Application Security Specialist | 536h | 536h | 33,952 | 33,952 |
| 13 | 1.1.3 | **1.1.3. Wybór metodyki zarządzania projektem** |  | 18d | 2019-03-05 A | 2019-03-28 A |  | 100% |  | 728h | 728h | 57,400 | 57,400 |
| 14 | 1.1.3.1 | 1.1.3.1. Zdefiniowanie sposobu śledzenia postępów | manual | 8d | 2019-03-05 A | 2019-03-14 A | 12 | 100% | Backend Developer 1; Backend Developer 2; Frontend Developer 1; Frontend Developer 2; Kierownik projektu; Senior Backend Developer; Test Developer; Web Application Security Specialist | 328h | 328h | 25,304 | 25,304 |
| 15 | 1.1.3.2 | 1.1.3.2. Zdefiniowanie sposobu monitorowania problemów | manual | 6d | 2019-03-15 A | 2019-03-22 A | 14 | 100% | Backend Developer 1; Backend Developer 2; Frontend Developer 1; Frontend Developer 2; Kierownik projektu; Senior Backend Developer; Test Developer; Web Application Security Specialist | 168h | 168h | 13,744 | 13,744 |
| 16 | 1.1.3.3 | 1.1.3.3. Zdefiniowanie procedur kontorli wersji | manual | 4d | 2019-03-25 A | 2019-03-28 A | 15 | 100% | Backend Developer 1; Backend Developer 2; Frontend Developer 1; Frontend Developer 2; Kierownik projektu; Senior Backend Developer; Test Developer; Web Application Security Specialist | 232h | 232h | 18,352 | 18,352 |
| 17 | 1.2 | **1.2. Określenie celów projektowych** |  | 51d | 2019-03-29 A | 2019-06-13 A |  | 100% |  | 672h | 672h | 71,304 | 71,304 |
| 18 | 1.2.1 | **1.2.1. Zdefiniowanie struktury projektu** |  | 33d | 2019-03-29 A | 2019-05-20 A |  | 100% |  | 480h | 480h | 51,168 | 51,168 |
| 19 | 1.2.1.1 | 1.2.1.1. Zdefiniowanie oczekiwań | manual | 10d | 2019-03-29 A | 2019-04-11 A | 16 | 100% | Kierownik projektu; Scrum Master; Senior Backend Developer | 240h | 240h | 24,480 | 24,480 |
| 20 | 1.2.1.2 | 1.2.1.2. Określenie opłacalności | manual | 4d | 2019-04-12 A | 2019-04-17 A | 19 | 100% | Kierownik projektu; Scrum Master; Senior Backend Developer | 96h | 96h | 9,792 | 9,792 |
| 21 | 1.2.1.3 | 1.2.1.3. Stworzenie struktury projektu | manual | 10d | 2019-04-18 A | 2019-05-08 A | 20 | 100% | Kierownik projektu; Scrum Master; Senior Backend Developer | 88h | 88h | 10,448 | 10,448 |
| 22 | 1.2.1.4 | 1.2.1.4. Ustalenie celów projektowych | manual | 6d | 2019-05-09 A | 2019-05-20 A | 21 | 100% | Kierownik projektu; Scrum Master; Senior Backend Developer | 56h | 56h | 6,448 | 6,448 |
| 23 | 1.2.2 | 1.2.2. Przygotowanie karty projektu | manual | 3d | 2019-05-21 A | 2019-05-24 A | 22 | 100% | Kierownik projektu; Scrum Master; Senior Backend Developer | 32h | 32h | 3,448 | 3,448 |
| 24 | 1.2.3 | 1.2.3. Uzyskanie akceptacji interesariuszy dla karty projektu | manual | 2d | 2019-05-27 A | 2019-05-28 A | 23 | 100% | Kierownik projektu; Scrum Master; Senior Backend Developer | 32h | 32h | 3,448 | 3,448 |
| 25 | 1.2.4 | 1.2.4. Opracowanie deklaracji zakresu projektu | manual | 2d | 2019-05-29 A | 2019-05-30 A | 24 | 100% | Kierownik projektu; Scrum Master; Senior Backend Developer | 32h | 32h | 3,448 | 3,448 |
| 26 | 1.2.5 | 1.2.5. Przygotowanie WBS | manual | 2d | 2019-05-31 A | 2019-06-03 A | 25 | 100% | Kierownik projektu; Scrum Master; Senior Backend Developer | 32h | 32h | 2,896 | 2,896 |
| 27 | 1.2.6 | 1.2.6.. Przygotowanie harmonogramu | manual | 3d | 2019-06-04 A | 2019-06-07 A | 26 | 100% | Kierownik projektu; Scrum Master; Senior Backend Developer | 32h | 32h | 3,448 | 3,448 |
| 28 | 1.2.7 | 1.2.7. Uzyskanie akceptacji interesariuszy dla WBS i harmonogramu | manual | 3d | 2019-06-10 A | 2019-06-13 A | 27 | 100% | Kierownik projektu; Scrum Master; Senior Backend Developer | 32h | 32h | 3,448 | 3,448 |

| ID | WBS | Task | Type | Duration | Start | Finish | Predecessors | Total slack | Resources | Work | Cost |
| --- | --- | --- | --- | --- | --- | --- | --- | --- | --- | --- | --- |
| 29 | 2 | **2. Stworzenie planu projektu** |  | 22d | 2019-06-14 | 2019-07-16 |  | 0d |  | 1968h | 130,720 |
| 30 | 2.1 | **2.1. Planowanie** |  | 22d | 2019-06-14 | 2019-07-16 |  | 0d |  | 1968h | 130,720 |
| 31 | 2.1.1 | **2.1.1. Funkcjonalne** |  | 20d | 2019-06-14 | 2019-07-12 |  | 0d |  | 320h | 40,000 |
| 32 | 2.1.1.1 | 2.1.1.1. Zdefiniowanie podstawowych funkcjonalności | manual | 10d | 2019-06-14 | 2019-06-28 | 28 |  | Kierownik projektu; Senior Backend Developer | 160h | 20,000 |
| 33 | 2.1.1.2 | 2.1.1.2. Zdefiniowanie zawartości rozszerzonej | manual | 10d | 2019-07-01 | 2019-07-12 | 32 |  | Kierownik projektu; Senior Backend Developer | 160h | 20,000 |
| 34 | 2.1.2 | **2.1.2. Graficzne** |  | 22d | 2019-06-14 | 2019-07-16 |  | 0d |  | 528h | 29,920 |
| 35 | 2.1.2.1 | 2.1.2.1. Przygotowanie projektu graficznego | manual | 4d | 2019-06-14 | 2019-06-19 | 28 |  | UI Developer; Frontend Developer 2; Frontend Developer 1 | 96h | 5,440 |
| 36 | 2.1.2.2 | 2.1.2.2. Wybór technologii | manual | 6d | 2019-06-21 | 2019-06-28 | 35 |  | Frontend Developer 1; Frontend Developer 2; UI Developer | 144h | 8,160 |
| 37 | 2.1.2.3 | 2.1.2.3. Wybór przewodniego motywu | manual | 4d | 2019-07-01 | 2019-07-04 | 36 |  | Frontend Developer 1; Frontend Developer 2; UI Developer | 96h | 5,440 |
| 38 | 2.1.2.4 | 2.1.2.4. Wybór czcionki, kolorów | manual | 2d | 2019-07-05 | 2019-07-08 | 37 |  | Frontend Developer 1; Frontend Developer 2; UI Developer | 48h | 2,720 |
| 39 | 2.1.2.5 | 2.1.2.5. Zaprojektowanie przycisków | manual | 6d | 2019-07-09 | 2019-07-16 | 38 |  | UI Developer; Frontend Developer 2; Frontend Developer 1 | 144h | 8,160 |
| 40 | 2.1.3 | **2.1.3. Techniczne** |  | 20d | 2019-06-14 | 2019-07-12 |  | 0d |  | 1120h | 60,800 |
| 41 | 2.1.3.1 | 2.1.3.1. Wybór technologii i freamworków | manual | 6d | 2019-06-14 | 2019-06-24 | 28 |  | Backend Developer 1; Backend Developer 2; Junior Backend Developer 1; Junior Backend Developer 2; Test Developer; Web Application Security Specialist; Scrum Master | 336h | 18,240 |
| 42 | 2.1.3.2 | 2.1.3.2. Wybór bazy danych | manual | 4d | 2019-06-25 | 2019-06-28 | 41 |  | Backend Developer 1; Backend Developer 2; Junior Backend Developer 1; Junior Backend Developer 2; Test Developer; Web Application Security Specialist; Scrum Master | 224h | 12,160 |
| 43 | 2.1.3.3 | 2.1.3.3. Wybór infrastruktury hostingowej | manual | 4d | 2019-07-01 | 2019-07-04 | 42 |  | Backend Developer 1; Backend Developer 2; Junior Backend Developer 1; Junior Backend Developer 2; Test Developer; Web Application Security Specialist; Scrum Master | 224h | 12,160 |
| 44 | 2.1.3.4 | 2.1.3.4. Zdefiniowanie sposobów dbania o bezpieczeństwo | manual | 4d | 2019-07-05 | 2019-07-10 | 43 |  | Backend Developer 1; Backend Developer 2; Junior Backend Developer 1; Junior Backend Developer 2; Test Developer; Web Application Security Specialist; Scrum Master | 224h | 12,160 |
| 45 | 2.1.3.5 | 2.1.3.5. Przygotowanie specyfikacji | manual | 2d | 2019-07-11 | 2019-07-12 | 44 |  | Backend Developer 1; Backend Developer 2; Junior Backend Developer 1; Junior Backend Developer 2; Test Developer; Web Application Security Specialist; Scrum Master | 112h | 6,080 |
| 46 | 3 | **3. Tworzenie aplikacji** |  | 235d | 2019-07-15 | 2020-06-22 |  | 0d |  | 19444h | 1,220,840 |
| 47 | 3.1 | **3.1. Etap 1** |  | 30d | 2019-07-15 | 2019-08-26 |  | 0d |  | 2232h | 136,680 |
| 48 | 3.1.1 | **3.1.1. Front-end** |  | 26d | 2019-07-17 | 2019-08-22 |  | 0d |  | 624h | 35,360 |
| 49 | 3.1.1.1 | 3.1.1.1. Konfiguracja środowiska i narzędzi | manual | 6d | 2019-07-17 | 2019-07-24 | 39 |  | Frontend Developer 1; Frontend Developer 2; UI Developer | 144h | 8,160 |
| 50 | 3.1.1.2 | 3.1.1.2. Implementacja strony domowej | manual | 10d | 2019-07-25 | 2019-08-07 | 49 |  | Frontend Developer 1; Frontend Developer 2; UI Developer | 240h | 13,600 |
| 51 | 3.1.1.3 | 3.1.1.3. Implementacja odnośników | manual | 10d | 2019-08-08 | 2019-08-22 | 50 |  | Frontend Developer 1; Frontend Developer 2; UI Developer | 240h | 13,600 |
| 52 | 3.1.2 | **3.1.2. Testowanie** |  | 26d | 2019-07-15 | 2019-08-20 |  | 0d |  | 568h | 40,960 |
| 53 | 3.1.2.1 | 3.1.2.1. Konfiguracja środowiska i narzędzi | manual | 6d | 2019-07-15 | 2019-07-22 | 45 |  | Test Developer; Backend Developer 1 [50%]; Junior Backend Developer 1 [50%]; Senior Backend Developer [50%] | 120h | 8,832 |
| 54 | 3.1.2.2 | 3.1.2.2. Implementacja freamworku testowego | manual | 10d | 2019-07-23 | 2019-08-05 | 53 |  | Test Developer; Backend Developer 1 [50%]; Junior Backend Developer 1 [50%]; Senior Backend Developer [50%] | 200h | 14,720 |
| 55 | 3.1.2.3 | 3.1.2.3. Zdefiniowanie kluczowych przypadków testowych | manual | 4d | 2019-08-06 | 2019-08-09 | 54 |  | Test Developer; Backend Developer 1 [50%]; Junior Backend Developer 1 [50%]; Senior Backend Developer [50%]; Scrum Master | 112h | 7,680 |
| 56 | 3.1.2.4 | 3.1.2.4. Stworzenie materiałów treningowych | manual | 2d | 2019-08-12 | 2019-08-13 | 55 |  | Test Developer; Backend Developer 1 [50%]; Junior Backend Developer 1 [50%]; Senior Backend Developer [50%]; Scrum Master | 56h | 3,840 |
| 57 | 3.1.2.5 | 3.1.2.5. Implementacja testów automatycznych | manual | 4d | 2019-08-14 | 2019-08-20 | 56 |  | Test Developer; Backend Developer 1 [50%]; Junior Backend Developer 1 [50%]; Senior Backend Developer [50%] | 80h | 5,888 |

| ID | WBS | Task | Type | Duration | Start | Finish | Predecessors | Total slack | Resources | Work | Cost |
| --- | --- | --- | --- | --- | --- | --- | --- | --- | --- | --- | --- |
| 58 | 3.1.3 | **3.1.3. Back-end - Implementacja modułu 1** |  | 15d | 2019-07-15 | 2019-08-02 |  |  |  | 840h | 44,160 |
| 59 | 3.1.3.1 | 3.1.3.1. Konfiguracja środowiska i narzędzi | manual | 6d | 2019-07-15 | 2019-07-22 | 45 |  | Senior Backend Developer [50%]; Junior Backend Developer 1 [50%]; Junior Backend Developer 2; Backend Developer 1 [50%]; Backend Developer 2 | 168h | 8,832 |
| 60 | 3.1.3.2 | 3.1.3.2. Implementacja funkcjonalności | manual | 10d | 2019-07-23 | 2019-08-05 | 59 |  | Senior Backend Developer [50%]; Junior Backend Developer 1 [50%]; Junior Backend Developer 2; Backend Developer 1 [50%]; Backend Developer 2 | 280h | 14,720 |
| 61 | 3.1.3.3 | 3.1.3.3. Pisanie testów automatycznych | manual | 4d | 2019-08-06 | 2019-08-09 | 60 |  | Senior Backend Developer [50%]; Junior Backend Developer 1 [50%]; Junior Backend Developer 2; Backend Developer 1 [50%]; Backend Developer 2 | 112h | 5,888 |
| 62 | 3.1.3.4 | 3.1.3.4. Zdefiniowanie przypadków testowych | manual | 4d | 2019-08-12 | 2019-08-16 | 61 |  | Senior Backend Developer [50%]; Junior Backend Developer 1 [50%]; Junior Backend Developer 2; Backend Developer 1 [50%]; Backend Developer 2 | 112h | 5,888 |
| 63 | 3.1.3.5 | 3.1.3.5. Implementacja testów jednostkowych | manual | 4d | 2019-08-19 | 2019-08-22 | 62 |  | Senior Backend Developer [50%]; Junior Backend Developer 1 [50%]; Junior Backend Developer 2; Backend Developer 1 [50%]; Backend Developer 2 | 112h | 5,888 |
| 64 | 3.1.3.6 | 3.1.3.6. Sprawdzenie pokrycia testowego | manual | 2d | 2019-08-23 | 2019-08-26 | 63 |  | Senior Backend Developer [50%]; Junior Backend Developer 1 [50%]; Junior Backend Developer 2; Backend Developer 1 [50%]; Backend Developer 2 | 56h | 2,944 |
| 65 | 3.1.4 | **3.1.4. Bezpieczeństwo** |  | 25d | 2019-07-15 | 2019-08-19 |  | 0d |  | 200h | 16,200 |
| 66 | 3.1.4.1 | 3.1.4.1. Implementacja podstawowego systemu | manual | 25d | 2019-07-15 | 2019-08-19 | 45 |  | Web Application Security Specialist | 200h | 16,200 |
| 67 | 3.2 | **3.2. Etap 2** |  | 42d | 2019-08-23 | 2019-10-21 |  | 0d |  | 2588h | 159,268 |
| 68 | 3.2.1 | **3.2.1. Front-end** |  | 30d | 2019-08-23 | 2019-10-03 |  | 0d |  | 720h | 40,800 |
| 69 | 3.2.1.1 | 3.2.1.1. Implementacja treści strony | manual | 20d | 2019-08-23 | 2019-09-19 | 51 |  | UI Developer; Frontend Developer 1; Frontend Developer 2 | 480h | 27,200 |
| 70 | 3.2.1.2 | 3.2.1.2. Implementacja panelu użytkownika | manual | 10d | 2019-09-20 | 2019-10-03 | 69 |  | UI Developer; Frontend Developer 1; Frontend Developer 2 | 240h | 13,600 |
| 71 | 3.2.2 | **3.2.2. Testowanie** |  | 40d | 2019-08-27 | 2019-10-21 |  | 0d |  | 640h | 38,120 |
| 72 | 3.2.2.1 | 3.2.2.1. Rozszerzanie frameworku testowego | manual | 10d | 2019-08-27 | 2019-09-09 | 64 |  | Backend Developer 1 [50%]; Junior Backend Developer 1 [50%]; Test Developer | 160h | 9,720 |
| 73 | 3.2.2.2 | 3.2.2.2. Implementacja testów automatycznych | manual | 10d | 2019-09-10 | 2019-09-23 | 72 |  | Backend Developer 1 [50%]; Junior Backend Developer 1 [50%]; Test Developer | 160h | 9,720 |
| 74 | 3.2.2.3 | 3.2.2.3. Przeprowadzenie testów regresyjnych | manual | 10d | 2019-09-24 | 2019-10-07 | 73 |  | Backend Developer 1 [50%]; Junior Backend Developer 1 [50%]; Scrum Master; Test Developer | 240h | 14,200 |
| 75 | 3.2.2.4 | 3.2.2.4. Przeprowadzenie testów manualnych | manual | 10d | 2019-10-08 | 2019-10-21 | 74 |  | Scrum Master | 80h | 4,480 |
| 76 | 3.2.3 | **3.2.3. Back-end - Implementacja modułu 2** |  | 31d | 2019-08-27 | 2019-10-08 |  | 0d |  | 868h | 54,188 |
| 77 | 3.2.3.1 | 3.2.3.1. Implementacja funkcjonalności | manual | 15d | 2019-08-27 | 2019-09-16 | 64 |  | Backend Developer 1 [50%]; Backend Developer 2 [50%]; Junior Backend Developer 1 [50%]; Junior Backend Developer 2; Senior Backend Developer | 420h | 26,220 |
| 78 | 3.2.3.2 | 3.2.3.2. Implementacja testów jednostkowych | manual | 6d | 2019-09-17 | 2019-09-24 | 77 |  | Backend Developer 1 [50%]; Backend Developer 2 [50%]; Junior Backend Developer 1 [50%]; Junior Backend Developer 2; Senior Backend Developer | 168h | 10,488 |
| 79 | 3.2.3.3 | 3.2.3.3.Zdefiniowanie przypadków testowych | manual | 4d | 2019-09-25 | 2019-09-30 | 78 |  | Backend Developer 1 [50%]; Backend Developer 2 [50%]; Junior Backend Developer 1 [50%]; Junior Backend Developer 2; Senior Backend Developer | 112h | 6,992 |
| 80 | 3.2.3.4 | 3.2.3.4. Naprawda defektów modułu 1 | manual | 4d | 2019-10-01 | 2019-10-04 | 79 |  | Backend Developer 1 [50%]; Backend Developer 2 [50%]; Junior Backend Developer 1 [50%]; Junior Backend Developer 2; Senior Backend Developer | 112h | 6,992 |
| 81 | 3.2.3.5 | 3.2.3.5. Sprawdzenie pokrycia testowego | manual | 2d | 2019-10-07 | 2019-10-08 | 80 |  | Backend Developer 1 [50%]; Backend Developer 2 [50%]; Junior Backend Developer 1 [50%]; Junior Backend Developer 2; Senior Backend Developer | 56h | 3,496 |

| ID | WBS | Task | Type | Duration | Start | Finish | Predecessors | Total slack | Resources | Work | Cost |
| --- | --- | --- | --- | --- | --- | --- | --- | --- | --- | --- | --- |
| 82 | 3.2.4 | **3.2.4. Bezpieczeństwo** |  | 30d | 2019-08-27 | 2019-10-07 |  | 0d |  | 360h | 26,160 |
| 83 | 3.2.4.1 | 3.2.4.1. Przeprowadzenie testów bezpieczeństwa | manual | 10d | 2019-08-27 | 2019-09-09 | 64 |  | Backend Developer 2 [50%]; Web Application Security Specialist | 120h | 8,720 |
| 84 | 3.2.4.2 | 3.2.4.2. Implementacja zabezpieczeń przed atakami SQL | manual | 10d | 2019-09-10 | 2019-09-23 | 83 |  | Backend Developer 2 [50%]; Web Application Security Specialist | 120h | 8,720 |
| 85 | 3.2.4.3 | 3.2.4.3. Implementacja zabezpieczeń przed atakami Cross-Site Scripting | manual | 10d | 2019-09-24 | 2019-10-07 | 84 |  | Backend Developer 2 [50%]; Web Application Security Specialist | 120h | 8,720 |
| 86 | 3.3 | **3.3. Etap 3** |  | 37d | 2019-10-04 | 2019-11-27 |  | 0d |  | 2480h | 154,548 |
| 87 | 3.3.1 | **3.3.1. Front-end** |  | 28d | 2019-10-04 | 2019-11-14 |  | 0d |  | 672h | 38,080 |
| 88 | 3.3.1.1 | 3.3.1.1. Naprawa defektów etapu 1 i 2 | manual | 6d | 2019-10-04 | 2019-10-11 | 70 |  | Frontend Developer 1; Frontend Developer 2; UI Developer | 144h | 8,160 |
| 89 | 3.3.1.2 | 3.3.1.2. Implementacja motywu | manual | 6d | 2019-10-14 | 2019-10-21 | 88 |  | Frontend Developer 1; Frontend Developer 2; UI Developer | 144h | 8,160 |
| 90 | 3.3.1.3 | 3.3.1.3. Zaprogramowanie formularzy | manual | 10d | 2019-10-22 | 2019-11-05 | 89 |  | Frontend Developer 1; Frontend Developer 2; UI Developer | 240h | 13,600 |
| 91 | 3.3.1.4 | 3.3.1.4. Obsłużenie formularzy po stronie widoku | manual | 6d | 2019-11-06 | 2019-11-14 | 90 |  | Frontend Developer 1; Frontend Developer 2; UI Developer | 144h | 8,160 |
| 92 | 3.3.2 | **3.3.2. Testowanie** |  | 31d | 2019-10-09 | 2019-11-22 |  | 0d |  | 496h | 30,876 |
| 93 | 3.3.2.1 | 3.3.2.1. Rozszerzanie frameworku testowego | manual | 10d | 2019-10-09 | 2019-10-22 | 81 |  | Junior Backend Developer 1 [50%]; Test Developer | 120h | 7,480 |
| 94 | 3.3.2.2 | 3.3.2.2. Implementacja testów automatycznych | manual | 10d | 2019-10-23 | 2019-11-06 | 93 |  | Backend Developer 1 [50%]; Junior Backend Developer 1 [50%]; Test Developer | 160h | 9,720 |
| 95 | 3.3.2.3 | 3.3.2.3. Przeprowadzenie testów regresyjnych | manual | 5d | 2019-11-07 | 2019-11-14 | 94 |  | Backend Developer 1 [50%]; Junior Backend Developer 1 [50%]; Test Developer; Scrum Master | 120h | 7,100 |
| 96 | 3.3.2.4 | 3.3.2.4. Przeprowadzenie testów manualnych | manual | 6d | 2019-11-15 | 2019-11-22 | 95 |  | Test Developer; Scrum Master | 96h | 6,576 |
| 97 | 3.3.3 | **3.3.3. Back-end - Implementacja modułu 3** |  | 34d | 2019-10-09 | 2019-11-27 |  | 0d |  | 952h | 59,432 |
| 98 | 3.3.3.1 | 3.3.3.1. Implementacja funkcjonalności | manual | 15d | 2019-10-09 | 2019-10-29 | 81 |  | Backend Developer 1 [50%]; Backend Developer 2 [50%]; Junior Backend Developer 1 [50%]; Junior Backend Developer 2; Senior Backend Developer | 420h | 26,220 |
| 99 | 3.3.3.2 | 3.3.3.2. Implementacja testów jednostkowych | manual | 6d | 2019-10-30 | 2019-11-07 | 98 |  | Backend Developer 1 [50%]; Backend Developer 2 [50%]; Junior Backend Developer 1 [50%]; Junior Backend Developer 2; Senior Backend Developer | 168h | 10,488 |
| 100 | 3.3.3.3 | 3.3.3.3. Zdefiniowanie nowych przypadków testowych | manual | 5d | 2019-11-08 | 2019-11-15 | 99 |  | Backend Developer 1 [50%]; Backend Developer 2 [50%]; Junior Backend Developer 1 [50%]; Junior Backend Developer 2; Senior Backend Developer | 140h | 8,740 |
| 101 | 3.3.3.4 | 3.3.3.4. Naprawda defektów modułu 2 | manual | 6d | 2019-11-18 | 2019-11-25 | 100 |  | Backend Developer 1 [50%]; Backend Developer 2 [50%]; Junior Backend Developer 1 [50%]; Junior Backend Developer 2; Senior Backend Developer | 168h | 10,488 |
| 102 | 3.3.3.5 | 3.3.3.5. Sprawdzenie pokrycia testowego i dopisanie koniecznych testów | manual | 2d | 2019-11-26 | 2019-11-27 | 101 |  | Backend Developer 1 [50%]; Backend Developer 2 [50%]; Junior Backend Developer 1 [50%]; Junior Backend Developer 2; Senior Backend Developer | 56h | 3,496 |
| 103 | 3.3.4 | **3.3.4. Bezpieczeństwo** |  | 30d | 2019-10-09 | 2019-11-21 |  | 0d |  | 360h | 26,160 |
| 104 | 3.3.4.1 | 3.3.4.1. Szyfrowanie aplikacji | manual | 10d | 2019-10-09 | 2019-10-22 | 81 |  | Backend Developer 2 [50%]; Web Application Security Specialist | 120h | 8,720 |
| 105 | 3.3.4.2 | 3.3.4.2. Zabezpieczenie na ataki MITM | manual | 10d | 2019-10-23 | 2019-11-06 | 104 |  | Backend Developer 2 [50%]; Web Application Security Specialist | 120h | 8,720 |
| 106 | 3.3.4.3 | 3.3.4.3. Przeprowadzenie testów bezpieczeństwa | manual | 10d | 2019-11-07 | 2019-11-21 | 105 |  | Backend Developer 2 [50%]; Web Application Security Specialist | 120h | 8,720 |

| ID | WBS | Task | Type | Duration | Start | Finish | Predecessors | Total slack | Resources | Work | Cost |
| --- | --- | --- | --- | --- | --- | --- | --- | --- | --- | --- | --- |
| 107 | 3.4 | **3.4. Etap 4** |  | 39d | 2019-11-15 | 2020-01-15 |  | 0d |  | 2560h | 157,520 |
| 108 | 3.4.1 | **3.4.1. Front-end** |  | 30d | 2019-11-15 | 2019-12-31 |  | 0d |  | 720h | 40,800 |
| 109 | 3.4.1.1 | 3.4.1.1. Stylowanie widoków | manual | 10d | 2019-11-15 | 2019-11-28 | 91 |  | Frontend Developer 1; Frontend Developer 2; UI Developer | 240h | 13,600 |
| 110 | 3.4.1.2 | 3.4.1.2. Naprawa defektów etapu 3 | manual | 10d | 2019-11-29 | 2019-12-12 | 109 |  | Frontend Developer 1; Frontend Developer 2; UI Developer | 240h | 13,600 |
| 111 | 3.4.1.3 | 3.4.1.3. Wdrożenie responsywności | manual | 10d | 2019-12-13 | 2019-12-31 | 110 |  | Frontend Developer 1; Frontend Developer 2; UI Developer | 240h | 13,600 |
| 112 | 3.4.2 | **3.4.2. Testowanie** |  | 30d | 2019-11-28 | 2020-01-15 |  | 0d |  | 520h | 31,400 |
| 113 | 3.4.2.1 | 3.4.2.1. Implementacja testów automatycznych | manual | 10d | 2019-11-28 | 2019-12-11 | 102 |  | Junior Backend Developer 2 [50%]; Test Developer | 120h | 7,480 |
| 114 | 3.4.2.2 | 3.4.2.2. Przeprowadzenie testów regresyjnych | manual | 10d | 2019-12-12 | 2019-12-30 | 113 |  | Junior Backend Developer 2 [50%]; Test Developer; Scrum Master | 200h | 11,960 |
| 115 | 3.4.2.3 | 3.4.2.3. Przeprowadzenie testów manualnych | manual | 10d | 2019-12-31 | 2020-01-15 | 114 |  | Junior Backend Developer 2 [50%]; Test Developer; Scrum Master | 200h | 11,960 |
| 116 | 3.4.3 | **3.4.3. Back-end - Implementacja modułu 4** |  | 30d | 2019-11-28 | 2020-01-15 |  | 0d |  | 960h | 59,160 |
| 117 | 3.4.3.1 | 3.4.3.1. Implementacja funkcjonalności | manual | 16d | 2019-11-28 | 2019-12-19 | 102 |  | Backend Developer 1; Backend Developer 2 [50%]; Junior Backend Developer 1; Junior Backend Developer 2 [50%]; Senior Backend Developer | 512h | 31,552 |
| 118 | 3.4.3.2 | 3.4.3.2. Implementacja testów jednostkowych | manual | 4d | 2019-12-20 | 2019-12-30 | 117 |  | Backend Developer 1; Backend Developer 2 [50%]; Junior Backend Developer 1; Junior Backend Developer 2 [50%]; Senior Backend Developer | 128h | 7,888 |
| 119 | 3.4.3.3 | 3.4.3.3. Zdefiniowanie nowych przypadków testowych | manual | 4d | 2019-12-31 | 2020-01-07 | 118 |  | Backend Developer 1; Backend Developer 2 [50%]; Junior Backend Developer 1; Junior Backend Developer 2 [50%]; Senior Backend Developer | 128h | 7,888 |
| 120 | 3.4.3.4 | 3.4.3.4. Naprawda defektów modułu 3 | manual | 6d | 2020-01-08 | 2020-01-15 | 119 |  | Backend Developer 1; Backend Developer 2 [50%]; Junior Backend Developer 1; Junior Backend Developer 2 [50%]; Senior Backend Developer | 192h | 11,832 |
| 121 | 3.4.4 | **3.4.4. Bezpieczeństwo** |  | 30d | 2019-11-28 | 2020-01-15 |  | 0d |  | 360h | 26,160 |
| 122 | 3.4.4.1 | 3.4.4.1. Przeprowadzenie testów bezpieczeństwa | manual | 10d | 2019-11-28 | 2019-12-11 | 102 |  | Web Application Security Specialist; Backend Developer 2 [50%] | 120h | 8,720 |
| 123 | 3.4.4.2 | 3.4.4.2. Przeprowadzenie ataku na aplikację w celu znalezienia słabości | manual | 10d | 2019-12-12 | 2019-12-30 | 122 |  | Web Application Security Specialist; Backend Developer 2 [50%] | 120h | 8,720 |
| 124 | 3.4.4.3 | 3.4.4.3. Naprawa odkrytych defektów | manual | 10d | 2019-12-31 | 2020-01-15 | 123 |  | Web Application Security Specialist; Backend Developer 2 [50%] | 120h | 8,720 |
| 125 | 3.5 | **3.5. Etap 5** |  | 49d | 2020-01-02 | 2020-03-11 |  | 0d |  | 3184h | 193,784 |
| 126 | 3.5.1 | **3.5.1. Front-end** |  | 40d | 2020-01-02 | 2020-02-27 |  | 0d |  | 1000h | 56,640 |
| 127 | 3.5.1.1 | 3.5.1.1. Stylowanie widoków | manual | 10d | 2020-01-02 | 2020-01-16 | 111 |  | Frontend Developer 1; Frontend Developer 2; UI Developer | 240h | 13,600 |
| 128 | 3.5.1.2 | 3.5.1.2. Wdrożenie responsywności | manual | 10d | 2020-01-17 | 2020-01-30 | 127 |  | Frontend Developer 1; Frontend Developer 2; UI Developer | 240h | 13,600 |
| 129 | 3.5.1.3 | 3.5.1.3. Naprawa defektów etapu 4 | manual | 10d | 2020-01-31 | 2020-02-13 | 128 |  | Frontend Developer 1; Frontend Developer 2; UI Developer | 240h | 13,600 |
| 130 | 3.5.1.4 | 3.5.1.4. Przeprowadzanie testów manualnych | manual | 10d | 2020-02-14 | 2020-02-27 | 129 |  | Frontend Developer 1; Frontend Developer 2; UI Developer; Scrum Master [50%] | 280h | 15,840 |

| ID | WBS | Task | Type | Duration | Start | Finish | Predecessors | Total slack | Resources | Work | Cost |
| --- | --- | --- | --- | --- | --- | --- | --- | --- | --- | --- | --- |
| 131 | 3.5.2 | **3.5.2. Testowanie** |  | 38d | 2020-01-16 | 2020-03-09 |  | 0d |  | 384h | 29,104 |
| 132 | 3.5.2.1 | 3.5.2.1. Implementacja testów automatycznych | manual | 18d | 2020-01-16 | 2020-02-10 | 120 |  | Test Developer | 144h | 11,664 |
| 133 | 3.5.2.2 | 3.5.2.2. Przeprowadzenie testów regresyjnych | manual | 10d | 2020-02-11 | 2020-02-24 | 132 |  | Test Developer; Scrum Master [50%] | 120h | 8,720 |
| 134 | 3.5.2.3 | 3.5.2.3. Przeprowadzenie testów manualnych | manual | 10d | 2020-02-25 | 2020-03-09 | 133 |  | Test Developer; Scrum Master [50%] | 120h | 8,720 |
| 135 | 3.5.3 | **3.5.3. Back-end - Implementacja modułu 5** |  | 40d | 2020-01-16 | 2020-03-11 |  | 0d |  | 1600h | 91,840 |
| 136 | 3.5.3.1 | 3.5.3.1. Implementacja funkcjonalności | manual | 18d | 2020-01-16 | 2020-02-10 | 120 |  | Senior Backend Developer; Junior Backend Developer 2; Junior Backend Developer 1; Backend Developer 2; Backend Developer 1 | 720h | 41,328 |
| 137 | 3.5.3.2 | 3.5.3.2. Implementacja testów jednostkowych | manual | 6d | 2020-02-11 | 2020-02-18 | 136 |  | Senior Backend Developer; Junior Backend Developer 2; Junior Backend Developer 1; Backend Developer 2; Backend Developer 1 | 240h | 13,776 |
| 138 | 3.5.3.3 | 3.5.3.3. Zdefiniowanie nowych przypadków testowych | manual | 4d | 2020-02-19 | 2020-02-24 | 137 |  | Senior Backend Developer; Junior Backend Developer 2; Junior Backend Developer 1; Backend Developer 2; Backend Developer 1 | 160h | 9,184 |
| 139 | 3.5.3.4 | 3.5.3.4. Naprawda defektów modułu 4 | manual | 12d | 2020-02-25 | 2020-03-11 | 138 |  | Senior Backend Developer; Junior Backend Developer 2; Junior Backend Developer 1; Backend Developer 2; Backend Developer 1 | 480h | 27,552 |
| 140 | 3.5.4 | **3.5.4. Bezpieczeństwo** |  | 25d | 2020-01-16 | 2020-02-19 |  | 0d |  | 200h | 16,200 |
| 141 | 3.5.4.1 | 3.5.4.1. Przeprowadzenie testów bezpieczeństwa | manual | 25d | 2020-01-16 | 2020-02-19 | 120 |  | Web Application Security Specialist | 200h | 16,200 |
| 142 | 3.6 | **3.6. Etap 6** |  | 70d | 2020-03-12 | 2020-06-22 |  | 0d |  | 6400h | 419,040 |
| 143 | 3.6.1 | **3.6.1. Testowanie** |  | 50d | 2020-03-12 | 2020-05-22 |  | 0d |  | 4800h | 320,000 |
| 144 | 3.6.1.1 | 3.6.1.1. Przeprowadzenie testów regresyjnych | manual | 10d | 2020-03-12 | 2020-03-25 | 139 |  | Backend Developer 1; Backend Developer 2; Frontend Developer 1; Frontend Developer 2; Junior Backend Developer 1; Junior Backend Developer 2; Kierownik projektu; Scrum Master; Senior Backend Developer; Test Developer; UI Developer; Web Application Security Specialist | 960h | 64,000 |
| 145 | 3.6.1.2 | 3.6.1.2. Przeprowadzenie testów manualnych | manual | 10d | 2020-03-26 | 2020-04-08 | 144 |  | Backend Developer 1; Backend Developer 2; Frontend Developer 1; Frontend Developer 2; Junior Backend Developer 1; Junior Backend Developer 2; Kierownik projektu; Scrum Master; Senior Backend Developer; Test Developer; UI Developer; Web Application Security Specialist | 960h | 64,000 |
| 146 | 3.6.1.3 | 3.6.1.3. Przeprowadzanie testów automatycznych | manual | 10d | 2020-04-09 | 2020-04-23 | 145 |  | Backend Developer 1; Backend Developer 2; Frontend Developer 1; Frontend Developer 2; Junior Backend Developer 1; Junior Backend Developer 2; Kierownik projektu; Scrum Master; Senior Backend Developer; Test Developer; UI Developer; Web Application Security Specialist | 960h | 64,000 |
| 147 | 3.6.1.4 | 3.6.1.4. Przeprowadzenie testów bezpieczeństwa | manual | 10d | 2020-04-24 | 2020-05-08 | 146 |  | Backend Developer 1; Backend Developer 2; Frontend Developer 1; Frontend Developer 2; Junior Backend Developer 1; Junior Backend Developer 2; Kierownik projektu; Scrum Master; Senior Backend Developer; Test Developer; UI Developer; Web Application Security Specialist | 960h | 64,000 |
| 148 | 3.6.1.5 | 3.6.1.5. Przeprowadzenie testów funkcjonalności | manual | 10d | 2020-05-11 | 2020-05-22 | 147 |  | Backend Developer 1; Backend Developer 2; Frontend Developer 1; Frontend Developer 2; Junior Backend Developer 1; Junior Backend Developer 2; Kierownik projektu; Scrum Master; Senior Backend Developer; Test Developer; UI Developer; Web Application Security Specialist | 960h | 64,000 |
| 149 | 3.6.2 | **3.6.2. Naprawa defektów** |  | 20d | 2020-05-25 | 2020-06-22 |  | 0d |  | 1600h | 99,040 |
| 150 | 3.6.2.1 | 3.6.2.1. Naprawa defektów po stronie back-endu | manual | 20d | 2020-05-25 | 2020-06-22 | 148 |  | Junior Backend Developer 1; Junior Backend Developer 2; Backend Developer 1; Backend Developer 2; Senior Backend Developer [50%]; Test Developer | 880h | 48,880 |
| 151 | 3.6.2.2 | 3.6.2.2. Naprawa defektów po stronie front-endu | manual | 20d | 2020-05-25 | 2020-06-22 | 148 |  | Frontend Developer 1; Frontend Developer 2; UI Developer | 480h | 27,200 |
| 152 | 3.6.2.3 | 3.6.2.3. Naprawa defektów po stronie bezpieczeństwa aplikacji | manual | 20d | 2020-05-25 | 2020-06-22 | 148 |  | Senior Backend Developer [50%]; Web Application Security Specialist | 240h | 22,960 |
| 153 | 4 | **4. Wdrożenie aplikacji** |  | 50d | 2020-06-23 | 2020-08-31 |  | 0d |  | 2920h | 194,480 |
| 154 | 4.1 | **4.1. Recenzja poszerzona** |  | 40d | 2020-06-23 | 2020-08-17 |  | 0d |  | 2360h | 157,960 |
| 155 | 4.1.1 | 4.1.1. Udostępnienie aplikacji w fazie beta | manual | 10d | 2020-06-23 | 2020-07-06 | 152 |  | Kierownik projektu; Senior Backend Developer | 160h | 20,000 |
| 156 | 4.1.2 | 4.1.2. Analiza raportów fazy beta | manual | 5d | 2020-07-07 | 2020-07-13 | 155 |  | Kierownik projektu; Senior Backend Developer; Web Application Security Specialist; Test Developer | 160h | 16,480 |
| 157 | 4.1.3 | 4.1.3. Reprodukcja defektów | manual | 10d | 2020-07-14 | 2020-07-27 | 156 |  | Backend Developer 1; Backend Developer 2; Frontend Developer 1; Frontend Developer 2; Junior Backend Developer 1; Junior Backend Developer 2; Scrum Master; Test Developer; Web Application Security Specialist | 720h | 40,480 |
| 158 | 4.1.4 | 4.1.4. Naprawa błędów aplikacji | manual | 15d | 2020-07-28 | 2020-08-17 | 157 |  | Backend Developer 1; Backend Developer 2; Frontend Developer 1; Frontend Developer 2; Junior Backend Developer 1; Junior Backend Developer 2; Scrum Master; Test Developer; Web Application Security Specialist; Senior Backend Developer; UI Developer | 1320h | 81,000 |
| 159 | 4.2 | 4.2. Instalacja na serwerze | manual | 5d | 2020-08-18 | 2020-08-24 | 158 |  | Senior Backend Developer [50%]; Kierownik projektu [50%]; Backend Developer 1 [50%]; Backend Developer 2 [50%] | 80h | 7,240 |
| 160 | 4.3 | 4.3. Szkolenie użytkowników | manual | 10d | 2020-08-18 | 2020-08-31 | 158 |  | Frontend Developer 1 [50%]; Frontend Developer 2 [50%]; Scrum Master [50%]; UI Developer [50%] | 160h | 9,040 |
| 161 | 4.4 | 4.4. Sporządzenie dokumentacji | manual | 5d | 2020-08-18 | 2020-08-24 | 158 |  | Backend Developer 1 [50%]; Backend Developer 2 [50%]; Frontend Developer 1 [50%]; Frontend Developer 2 [50%]; Junior Backend Developer 1; Junior Backend Developer 2; Kierownik projektu [50%]; Scrum Master [50%]; Senior Backend Developer [50%]; Test Developer; UI Developer [50%]; Web Application Security Specialist | 320h | 20,240 |
